# SD17-V1研发计划

Schedule from a web Gantt chart, 2025-04-16 to 2025-08-31.
Saturdays are off

## Schedule

| ID | WBS | Task | Duration | Start | Finish | Predecessors | Status |
| --- | --- | --- | --- | --- | --- | --- | --- |
| 2 | 1 | **结构设计** | 118d | 2025-04-16 | 2025-08-31 |  |  |
| 3 | 1.1 | ID+结构堆叠 | 22d | 2025-04-16 | 2025-05-11 |  |  |
| 4 | 1.2 | 结构评审和修改 | 4d | 2025-05-16 | 2025-05-20 | 3 | waiting |
| 5 | 1.3 | 第一阶段结构细化评审 | 1d | 2025-05-22 | 2025-05-22 | 4 | waiting |
| 6 | 1.4 | 供应商预选 | 1d | 2025-05-23 | 2025-05-23 | 5 | waiting |
| 7 | 1.5 | 第二阶段结构细化和评审 | 1d | 2025-05-26 | 2025-05-26 | 6 | waiting |
| 8 | 1.6 | **DFM修改和评审** | 5d | 2025-05-27 | 2025-06-01 | 7 | waiting |
| 9 | 1.6.1 | 供应商输出DFM | 3d | 2025-05-27 | 2025-05-29 |  | waiting |
| 10 | 1.6.2 | DFM评审 | 1d | 2025-05-30 | 2025-05-30 | 9 | waiting |
| 11 | 1.6.3 | DFM修改确认 | 1d | 2025-06-01 | 2025-06-01 | 10 | waiting |
| 12 | 1.7 | 正式T0投模+修模 | 44d | 2025-06-02 | 2025-07-22 | 11 | waiting |
| 13 | 1.8 | 回T1 | 34d | 2025-07-23 | 2025-08-31 |  |  |
| 14 | 2 | **硬件设计** | 29d | 2025-05-23 | 2025-06-25 |  |  |
| 15 | 2.1 | 硬件原理图设计完成 | 4d | 2025-05-23 | 2025-05-27 |  |  |
| 16 | 2.2 | 硬件layout | 8d | 2025-05-28 | 2025-06-05 | 15 | waiting |
| 17 | 2.3 | 投PCB板+确认数量并回板 | 7d | 2025-06-06 | 2025-06-13 | 16 | waiting |
| 18 | 2.4 | 回PCBA板 | 4d | 2025-06-15 | 2025-06-18 | 17 | waiting |
| 19 | 2.5 | 硬件裸板调试 | 5d | 2025-06-19 | 2025-06-24 | 18 | waiting |
| 20 | 2.6 | 硬件单元测试完成 | 1d | 2025-06-25 | 2025-06-25 | 19 | waiting |
| 21 | 3 | **软件开发** | 26d | 2025-06-19 | 2025-07-18 |  |  |
| 22 | 3.1 | 裸板调试版本 | 2d | 2025-06-19 | 2025-06-20 |  |  |
| 23 | 3.2 | 单元测试版本 | 3d | 2025-06-22 | 2025-06-24 | 22 | waiting |
| 24 | 3.3 | 工厂版本转测版本完成 | 7d | 2025-06-25 | 2025-07-02 | 23 | waiting |
| 25 | 3.4 | 正式版本转测版本完成 | 14d | 2025-07-03 | 2025-07-18 | 24 | waiting |
| 26 | 4 | 工厂小批 | 1d | 2025-04-16 | 2025-04-16 |  |  |
| 27 | 5 | 小批备料 | 1d | 2025-04-16 | 2025-04-16 |  |  |
| 28 | 6 | 回PCB,PCBA | 1d | 2025-04-16 | 2025-04-16 |  |  |
